# Delivery Schedule

Schedule from MS Project, 2014-09-22 to 2015-01-14.

## Calendars

- Standard: Mon-Fri 08:00-12:00, 13:00-17:00; Sat-Sun off.

## Resources

| Resource |
| --- |
| Resource #1 |
| Resource #2 |
| Resource #3 |
| Resource #4 |
| Kaleen |
| Mike |
| Jake |

## Schedule

| ID | WBS | Task | Duration | Start | Finish | Predecessors | Total slack | Free slack | Resources | Work |
| --- | --- | --- | --- | --- | --- | --- | --- | --- | --- | --- |
| 1 | 1 | **Huawei Pits** | 83d | 2014-09-22 | 2015-01-14 |  | 0d |  |  | 1736h |
| 2 | 1.1 | **H.248 Binary** | 23d | 2014-10-06 | 2014-11-05 |  | 28d | 0d | Mike | 184h |
| 3 | 1.1.1 | Verify environment | 1d | 2014-10-06 | 2014-10-06 |  | 28d | 0d |  |  |
| 4 | 1.1.2 | Build | 15d | 2014-10-07 | 2014-10-27 | 3 | 28d | 0d |  |  |
| 5 | 1.1.3 | Test | 5d | 2014-10-28 | 2014-11-03 | 4 | 28d | 0d |  |  |
| 6 | 1.1.4 | Accept | 2d | 2014-11-04 | 2014-11-05 | 5 | 28d |  |  |  |
| 7 | 1.2 | **H.248 Text** | 22d | 2014-11-06 | 2014-12-05 | 2 | 28d |  | Mike | 176h |
| 8 | 1.2.1 | Verify environment | 1d | 2014-11-06 | 2014-11-06 |  | 28d | 0d |  |  |
| 9 | 1.2.2 | Build | 15d | 2014-11-07 | 2014-11-27 | 8 | 28d | 0d |  |  |
| 10 | 1.2.3 | Test | 5d | 2014-11-28 | 2014-12-04 | 9 | 28d | 0d |  |  |
| 11 | 1.2.4 | Accept | 1d | 2014-12-05 | 2014-12-05 | 10 | 28d |  |  |  |
| 12 | 1.3 | **M3UA** | 23d | 2014-10-06 | 2014-11-05 |  | 3d | 0d |  |  |
| 13 | 1.3.1 | Verify environment | 1d | 2014-10-06 | 2014-10-06 |  | 3d | 0d |  |  |
| 14 | 1.3.2 | Build | 15d | 2014-10-07 | 2014-10-27 | 13 | 3d | 0d |  |  |
| 15 | 1.3.3 | Test | 5d | 2014-10-28 | 2014-11-03 | 14 | 3d | 0d |  |  |
| 16 | 1.3.4 | Accept | 2d | 2014-11-04 | 2014-11-05 | 15 | 3d |  |  |  |
| 17 | 1.4 | **M2PA** | 18d | 2014-11-06 | 2014-12-01 | 12 | 3d | 0d |  |  |
| 18 | 1.4.1 | Verify environment | 1d | 2014-11-06 | 2014-11-06 |  | 3d | 0d |  |  |
| 19 | 1.4.2 | Build | 10d | 2014-11-07 | 2014-11-20 | 18 | 3d | 0d |  |  |
| 20 | 1.4.3 | Test | 5d | 2014-11-21 | 2014-11-27 | 19 | 3d | 0d |  |  |
| 21 | 1.4.4 | Accept | 2d | 2014-11-28 | 2014-12-01 | 20 | 3d |  |  |  |
| 22 | 1.5 | **SIP-I/SIP-T** | 29d | 2014-12-02 | 2015-01-09 | 17 | 3d |  | Resource #1 | 232h |
| 23 | 1.5.1 | Verify environment | 2d | 2014-12-02 | 2014-12-03 |  | 3d | 0d |  |  |
| 24 | 1.5.2 | Build | 20d | 2014-12-04 | 2014-12-31 | 23 | 3d | 0d |  |  |
| 25 | 1.5.3 | Test | 5d | 2015-01-01 | 2015-01-07 | 24 | 3d | 0d |  |  |
| 26 | 1.5.4 | Accept | 2d | 2015-01-08 | 2015-01-09 | 25 | 3d |  |  |  |

| ID | WBS | Task | Duration | Start | Finish | Predecessors | Total slack | Resources | Work |
| --- | --- | --- | --- | --- | --- | --- | --- | --- | --- |
| 27 | 1.6 | **SFTP** | 29d | 2014-09-22 | 2014-10-30 |  |  | Kaleen | 232h |
| 28 | 1.6.1 | Verify environment | 2d | 2014-09-22 | 2014-09-23 |  | 0d |  |  |
| 29 | 1.6.2 | Build | 20d | 2014-09-24 | 2014-10-21 | 28 | 0d |  |  |
| 30 | 1.6.3 | Test | 5d | 2014-10-22 | 2014-10-28 | 29 | 0d |  |  |
| 31 | 1.6.4 | Accept | 2d | 2014-10-29 | 2014-10-30 | 30 | 0d |  |  |
| 32 | 1.7 | **ERPS** | 18d | 2014-10-31 | 2014-11-25 | 27 | 0d | Kaleen | 144h |
| 33 | 1.7.1 | Verify environment | 1d | 2014-10-31 | 2014-10-31 |  | 0d |  |  |
| 34 | 1.7.2 | Build | 10d | 2014-11-03 | 2014-11-14 | 33 | 0d |  |  |
| 35 | 1.7.3 | Test | 5d | 2014-11-17 | 2014-11-21 | 34 | 0d |  |  |
| 36 | 1.7.4 | Accept | 2d | 2014-11-24 | 2014-11-25 | 35 | 0d |  |  |
| 37 | 1.8 | **MLDP** | 18d | 2014-11-26 | 2014-12-19 | 32 | 0d | Kaleen | 144h |
| 38 | 1.8.1 | Verify environment | 1d | 2014-11-26 | 2014-11-26 |  | 0d |  |  |
| 39 | 1.8.2 | Build | 10d | 2014-11-27 | 2014-12-10 | 38 | 0d |  |  |
| 40 | 1.8.3 | Test | 5d | 2014-12-11 | 2014-12-17 | 39 | 0d |  |  |
| 41 | 1.8.4 | Accept | 2d | 2014-12-18 | 2014-12-19 | 40 | 0d |  |  |
| 42 | 1.9 | **MGCP** | 18d | 2014-12-22 | 2015-01-14 | 37 | 0d | Kaleen | 144h |
| 43 | 1.9.1 | Verify environment | 1d | 2014-12-22 | 2014-12-22 |  | 0d |  |  |
| 44 | 1.9.2 | Build | 10d | 2014-12-23 | 2015-01-05 | 43 | 0d |  |  |
| 45 | 1.9.3 | Test | 5d | 2015-01-06 | 2015-01-12 | 44 | 0d |  |  |
| 46 | 1.9.4 | Accept | 2d | 2015-01-13 | 2015-01-14 | 45 | 0d |  |  |
| 47 | 1.10 | **RTP/RTCP/SRTP** | 60d | 2014-09-29 | 2014-12-19 |  |  | Jake | 480h |
| 48 | 1.10.1 | Verify environment | 2d | 2014-09-29 | 2014-09-30 |  | 0d |  |  |
| 49 | 1.10.2 | Build | 45d | 2014-10-01 | 2014-12-02 | 48 | 0d |  |  |
| 50 | 1.10.3 | Test | 10d | 2014-12-03 | 2014-12-16 | 49 | 0d |  |  |
| 51 | 1.10.4 | Accept | 3d | 2014-12-17 | 2014-12-19 | 50 | 0d |  |  |
